gantt
    title Planning Smartex Sustway — démarrage 24 août 2026
    dateFormat  YYYY-MM-DD
    excludes    weekends

    section A — Fondations
    DDL PostgreSQL + setup repo/Docker/CI      :a1, 2026-08-24, 5d

    section B — Socle applicatif
    Utilisateurs, rôles, RBAC                  :b1, 2026-08-31, 5d
    Entreprises, pays, sites                   :b2, after b1, 5d
    Moteur de règles + journal d'audit         :b3, after b2, 5d

    section C — Abonnements & onboarding
    Formules Free/Standard/Avancées + 2FA      :c1, 2026-09-14, 8d
    Paiement PI-SPI / Wave + facturation       :c2, after c1, 4d

    section D — IA de base (Standard)
    87 critères + questionnaire dynamique      :d1, 2026-10-05, 5d
    Missions d'audit + collecte de preuves     :d2, after d1, 5d
    Agents IA Document/Evidence/Compliance/Scoring :d3, after d2, 8d

    section E — IA avancée (Avancées)
    Risk Agent + Recommendation Agent          :e1, 2026-11-02, 8d
    Seuil de confiance 80% + revue experte     :e2, after e1, 7d

    section F — Référentiels & back-office
    Back-office référentiels + criticité secteur :f1, 2026-11-23, 10d
    Référentiels PRI, GRESB, ITIE               :f2, after f1, 5d
    Mapping bailleur IFC/SFI (conditionnel)     :f3, after f2, 5d

    section Pause fêtes
    Congés fin d'année                         :milestone, m1, 2026-12-21, 0d

    section G — Finalisation
    Non-conformités + moteur de priorité       :g1, 2027-01-04, 5d
    Rapports, dashboards, export CSV/PDF       :g2, after g1, 8d
    RGPD, tests, déploiement                   :g3, after g2, 7d

    section Jalons
    MVP Standard livré                         :milestone, jalon1, 2026-10-29, 0d
    Revue experte opérationnelle               :milestone, jalon2, 2026-11-20, 0d
    Référentiels + bailleur intégrés           :milestone, jalon3, 2026-12-18, 0d
    V1 complète livrée                         :milestone, jalon4, 2027-01-29, 0d
